# Создание карты города

Schedule from MS Project, 2024-03-01 to 2024-07-29, costs in ₽.
Команда разработчиков из 16 человек занимается созданием карты города на основе собственного модуля отображения. Проект должен быть завершен в течение 6 месяцев. Бюджет проекта: 50 000 рублей.

## Calendars

- Стандартный: Mon-Fri 09:00-13:00, 14:00-18:00; Sat-Sun off. Exceptions (off unless hours are given): 2024-03-08 (Международный женский день), 2024-05-09 (День Победы), 2024-06-12 (День России).

## Resources

| Resource | Group | Rate | Cost per use |
| --- | --- | --- | --- |
| Ведущий программист | Программирование | 10 | 100 |
| Программист#1 | Программирование | 7 | 50 |
| Программист#2 | Программирование | 7 | 50 |
| Программист#3 | Программирование | 7 | 50 |
| Программист#4 | Программирование | 7 | 50 |
| Системный аналитик | Анализ | 20 | 300 |
| Художник-дизайнер | Дизайн | 8 | 70 |
| Технический писатель | Документация | 5 | 20 |
| Web-дизайнер | Internet | 7 | 50 |
| 3D аниматор | Дизайн | 8 | 70 |
| Мультимедиа- корреспондент | М-медиа | 3 | 20 |
| Наборщик данных#1 | Ввод данных | 2 | 10 |
| Наборщик данных#2 | Ввод данных | 2 | 10 |
| Наборщик данных#3 | Ввод данных | 2 | 10 |
| Наборщик данных#4 | Ввод данных | 2 | 10 |
| Наборщик данных#5 | Ввод данных | 2 | 10 |
| Аренда сервера |  | 2 |  |

## Schedule

| ID | WBS | Task | Type | Duration | Start | Finish | Predecessors | Baseline start | Baseline finish | Baseline duration | Total slack | Free slack | Resources | Work | Cost | Baseline cost |
| --- | --- | --- | --- | --- | --- | --- | --- | --- | --- | --- | --- | --- | --- | --- | --- | --- |
| 1 | 1 | Начало проекта | milestone | 0w | 2024-03-01 09:00 | 2024-03-01 09:00 |  | 2024-03-01 09:00 | 2024-03-01 09:00 | 0w | 44.73d | 0.12d |  |  |  |  |
| 2 | 2 | **Создание интерфейса** |  | 80.48d | 2024-03-01 10:00 | 2024-06-26 14:48 | 1 | 2024-03-01 10:00 | 2024-06-26 14:48 | 80.48d | 0d |  |  | 560h | 5,650 | 5,650 |
| 3 | 2.1 | **Разработка дизайна интерфейса** |  | 26.75d | 2024-03-01 10:00 | 2024-04-09 17:00 |  | 2024-03-01 10:00 | 2024-04-09 17:00 | 26.75d | 44.61d | 0d |  | 320h | 2,770 | 2,770 |
| 4 | 2.1.1 | Разработка 2D графических элементов |  | 3w | 2024-03-01 10:00 | 2024-03-26 10:00 |  | 2024-03-01 10:00 | 2024-03-26 10:00 | 3w | 44.61d | 0d | Художник-дизайнер | 120h | 1,030 | 1,030 |
| 5 | 2.1.2 | Разработка 3D графических элементов |  | 2w | 2024-03-01 10:00 | 2024-03-18 16:00 | 4SS | 2024-03-01 10:00 | 2024-03-18 16:00 | 2w | 44.61d | 0d | 3D аниматор | 80h | 710 | 710 |
| 6 | 2.1.3 | Создание заставки |  | 3w | 2024-03-18 16:00 | 2024-04-09 17:00 | 5 | 2024-03-18 16:00 | 2024-04-09 17:00 | 3w | 44.61d |  | 3D аниматор | 120h | 1,030 | 1,030 |
| 7 | 2.2 | Программирование интерфейса |  | 1.5w | 2024-06-17 09:48 | 2024-06-26 14:48 | 3, 12 | 2024-06-17 09:48 | 2024-06-26 14:48 | 1.5w | 0d |  | Программист#4; Программист#1; Программист#2; Программист#3 | 240h | 1,880 | 1,880 |
| 8 | 3 | **Построение базы объектов** |  | 85.75d | 2024-03-26 10:00 | 2024-07-25 17:00 |  | 2024-03-26 10:00 | 2024-07-25 17:00 | 85.75d | 1.98d |  | Аренда сервера | 5631h | 15,352 | 15,352 |
| 9 | 3.1 | Анализ и построение структуры базы объектов |  | 2w | 2024-03-26 10:00 | 2024-04-09 17:00 |  | 2024-03-26 10:00 | 2024-04-09 17:00 | 2w | 1.98d | 0d | Системный аналитик | 80h | 1,900 | 1,900 |
| 10 | 3.2 | Программирование средств обработки базы объектов |  | 3w | 2024-04-09 17:00 | 2024-04-30 17:00 | 9 | 2024-04-09 17:00 | 2024-04-30 17:00 | 3w | 1.98d | 0d | Программист#3; Программист#4 | 240h | 1,780 | 1,780 |
| 11 | 3.3 | Наполнение базы объектов |  | 12w | 2024-04-30 17:00 | 2024-07-25 17:00 | 10 | 2024-04-30 17:00 | 2024-07-25 17:00 | 12w | 1.98d |  | Наборщик данных#1; Наборщик данных#2; Наборщик данных#3; Наборщик данных#4; Наборщик данных#5 | 2400h | 4,850 | 4,850 |
| 12 | 4 | **Создание ядра GIS** |  | 72.98d | 2024-03-01 10:00 | 2024-06-17 09:48 |  | 2024-03-01 10:00 | 2024-06-17 09:48 | 72.98d | 0d |  |  | 1880h | 18,060.05 | 18,060.05 |
| 13 | 4.1 | Анализ и проектирование ядра |  | 3w | 2024-03-01 10:00 | 2024-03-26 10:00 |  | 2024-03-01 10:00 | 2024-03-26 10:00 | 3w | 0d |  | Системный аналитик; Ведущий программист | 240h | 4,000 | 4,000 |
| 14 | 4.2 | Создание модели ядра |  | 2.09w | 2024-03-26 10:00 | 2024-04-09 14:33 | 13 | 2024-03-26 10:00 | 2024-04-09 14:33 | 2.09w | 0d |  | Ведущий программист; Программист#1; Программист#2; Программист#3; Программист#4 | 400h | 3,329.67 | 3,329.67 |
| 15 | 4.3 | Тестирование модели ядра |  | 1w | 2024-04-09 14:33 | 2024-04-16 14:33 | 14 | 2024-04-09 14:33 | 2024-04-16 14:33 | 1w | 0d |  | Программист#1 | 40h | 330 | 330 |
| 16 | 4.4 | Создание рабочей версии ядра |  | 8.31w | 2024-04-16 14:33 | 2024-06-17 09:48 | 15 | 2024-04-16 14:33 | 2024-06-17 09:48 | 8.31w | 0d |  | Ведущий программист; Программист#1; Программист#2; Программист#3; Программист#4 | 1200h | 9,400.39 | 9,400.39 |
| 17 | 5 | Создание мультимедиа - наполнения |  | 6w | 2024-04-09 17:00 | 2024-05-27 11:00 | 3 | 2024-04-09 17:00 | 2024-05-27 11:00 | 6w | 44.61d |  | Мультимедиа- корреспондент | 240h | 740 | 740 |
| 18 | 6 | Создание справочной системы |  | 2w | 2024-07-08 12:48 | 2024-07-22 15:48 | 7 | 2024-07-08 12:48 | 2024-07-22 15:48 | 2w | 5.13d |  | Технический писатель | 80h | 420 | 420 |
| 19 | 7 | **Создание руководства пользователя** |  | 17.75d | 2024-06-11 14:48 | 2024-07-08 11:48 | 7FS-10d | 2024-06-11 14:48 | 2024-07-08 11:48 | 17.75d | 0d |  |  | 160h | 1,010 | 1,010 |
| 20 | 7.1 | Разработка дизайна руководства |  | 1w | 2024-06-11 14:48 | 2024-06-19 16:48 |  | 2024-06-11 14:48 | 2024-06-19 16:48 | 1w | 0d |  | Художник-дизайнер | 40h | 390 | 390 |
| 21 | 7.2 | Написание руководства пользователя |  | 3w | 2024-06-14 14:48 | 2024-07-08 11:48 | 20SS+2d | 2024-06-14 14:48 | 2024-07-08 11:48 | 3w | 0d |  | Технический писатель | 120h | 620 | 620 |
| 22 | 8 | **Создание web-сайта и поддержка** |  | 24d | 2024-06-14 14:48 | 2024-07-18 14:48 |  | 2024-06-14 14:48 | 2024-07-18 14:48 | 24d | 0d |  |  | 248h | 2,106 | 2,106 |
| 23 | 8.1 | Разработка структуры сайта |  | 1d | 2024-06-14 14:48 | 2024-06-17 14:48 | 21SS | 2024-06-14 14:48 | 2024-06-17 14:48 | 1d | 0d |  | Web-дизайнер | 8h | 106 | 106 |
| 24 | 8.2 | Разработка дизайна сайта |  | 1.48w | 2024-06-17 15:48 | 2024-06-27 09:48 | 23 | 2024-06-17 15:48 | 2024-06-27 09:48 | 1.48w | 0d |  | Web-дизайнер; Художник-дизайнер; 3D аниматор | 120h | 1,110 | 1,110 |
| 25 | 8.3 | Наполнение сайта |  | 3w | 2024-06-27 09:48 | 2024-07-18 14:48 | 24 | 2024-06-27 09:48 | 2024-07-18 14:48 | 3w | 0d |  | Web-дизайнер | 120h | 890 | 890 |
| 26 | 9 | Тестирование сайта |  | 2.45w | 2024-07-11 14:48 | 2024-07-29 16:51 | 22FS-1w | 2024-07-11 14:48 | 2024-07-29 16:51 | 2.45w | 0d |  | Ведущий программист; Программист#1; Программист#2; Программист#3; Программист#4 | 480h | 3,945.15 | 3,945.15 |
| 27 | 10 | Сдача сайта в эксплуатацию | milestone | 0w | 2024-07-29 16:51 | 2024-07-29 16:51 | 26 | 2024-07-29 16:51 | 2024-07-29 16:51 | 0w | 0d |  |  |  |  |  |

| ID | WBS | Task | Type | Duration | Start | Finish | Baseline start | Baseline finish | Baseline duration | Constraint | Resources | Work | Cost | Baseline cost |
| --- | --- | --- | --- | --- | --- | --- | --- | --- | --- | --- | --- | --- | --- | --- |
| 28 | 11 | **Совещание** |  | 98d | 2024-03-06 09:00 | 2024-07-24 18:00 | 2024-03-06 09:00 | 2024-07-24 18:00 | 98d |  |  | 147h | 1,281 | 1,281 |
| 29 | 11.1 | Совещание 1 | manual | 1h | 2024-03-06 09:00 | 2024-03-06 10:00 | 2024-03-06 09:00 | 2024-03-06 10:00 | 1h | start no earlier than 2024-03-06 09:00 | 3D аниматор; Web-дизайнер; Ведущий программист; Мультимедиа- корреспондент; Системный аналитик; Технический писатель; Художник-дизайнер | 7h | 61 | 61 |
| 30 | 11.2 | Совещание 2 | manual | 1h | 2024-03-13 09:00 | 2024-03-13 10:00 | 2024-03-13 09:00 | 2024-03-13 10:00 | 1h | start no earlier than 2024-03-13 09:00 | 3D аниматор; Web-дизайнер; Ведущий программист; Мультимедиа- корреспондент; Системный аналитик; Технический писатель; Художник-дизайнер | 7h | 61 | 61 |
| 31 | 11.3 | Совещание 3 | manual | 1h | 2024-03-20 09:00 | 2024-03-20 10:00 | 2024-03-20 09:00 | 2024-03-20 10:00 | 1h | start no earlier than 2024-03-20 09:00 | 3D аниматор; Web-дизайнер; Ведущий программист; Мультимедиа- корреспондент; Системный аналитик; Технический писатель; Художник-дизайнер | 7h | 61 | 61 |
| 32 | 11.4 | Совещание 4 | manual | 1h | 2024-03-27 09:00 | 2024-03-27 10:00 | 2024-03-27 09:00 | 2024-03-27 10:00 | 1h | start no earlier than 2024-03-27 09:00 | 3D аниматор; Web-дизайнер; Ведущий программист; Мультимедиа- корреспондент; Системный аналитик; Технический писатель; Художник-дизайнер | 7h | 61 | 61 |
| 33 | 11.5 | Совещание 5 | manual | 1h | 2024-04-03 09:00 | 2024-04-03 10:00 | 2024-04-03 09:00 | 2024-04-03 10:00 | 1h | start no earlier than 2024-04-03 09:00 | 3D аниматор; Web-дизайнер; Ведущий программист; Мультимедиа- корреспондент; Системный аналитик; Технический писатель; Художник-дизайнер | 7h | 61 | 61 |
| 34 | 11.6 | Совещание 6 | manual | 1h | 2024-04-10 09:00 | 2024-04-10 10:00 | 2024-04-10 09:00 | 2024-04-10 10:00 | 1h | start no earlier than 2024-04-10 09:00 | 3D аниматор; Web-дизайнер; Ведущий программист; Мультимедиа- корреспондент; Системный аналитик; Технический писатель; Художник-дизайнер | 7h | 61 | 61 |
| 35 | 11.7 | Совещание 7 | manual | 1h | 2024-04-17 09:00 | 2024-04-17 10:00 | 2024-04-17 09:00 | 2024-04-17 10:00 | 1h | start no earlier than 2024-04-17 09:00 | 3D аниматор; Web-дизайнер; Ведущий программист; Мультимедиа- корреспондент; Системный аналитик; Технический писатель; Художник-дизайнер | 7h | 61 | 61 |
| 36 | 11.8 | Совещание 8 | manual | 1h | 2024-04-24 09:00 | 2024-04-24 10:00 | 2024-04-24 09:00 | 2024-04-24 10:00 | 1h | start no earlier than 2024-04-24 09:00 | 3D аниматор; Web-дизайнер; Ведущий программист; Мультимедиа- корреспондент; Системный аналитик; Технический писатель; Художник-дизайнер | 7h | 61 | 61 |
| 37 | 11.9 | Совещание 9 | manual | 1h | 2024-05-01 09:00 | 2024-05-01 10:00 | 2024-05-01 09:00 | 2024-05-01 10:00 | 1h | start no earlier than 2024-05-01 09:00 | 3D аниматор; Web-дизайнер; Ведущий программист; Мультимедиа- корреспондент; Системный аналитик; Технический писатель; Художник-дизайнер | 7h | 61 | 61 |
| 38 | 11.10 | Совещание 10 | manual | 1h | 2024-05-08 09:00 | 2024-05-08 10:00 | 2024-05-08 09:00 | 2024-05-08 10:00 | 1h | start no earlier than 2024-05-08 09:00 | 3D аниматор; Web-дизайнер; Ведущий программист; Мультимедиа- корреспондент; Системный аналитик; Технический писатель; Художник-дизайнер | 7h | 61 | 61 |
| 39 | 11.11 | Совещание 11 | manual | 1h | 2024-05-15 09:00 | 2024-05-15 10:00 | 2024-05-15 09:00 | 2024-05-15 10:00 | 1h | start no earlier than 2024-05-15 09:00 | 3D аниматор; Web-дизайнер; Ведущий программист; Мультимедиа- корреспондент; Системный аналитик; Технический писатель; Художник-дизайнер | 7h | 61 | 61 |
| 40 | 11.12 | Совещание 12 | manual | 1h | 2024-05-22 09:00 | 2024-05-22 10:00 | 2024-05-22 09:00 | 2024-05-22 10:00 | 1h | start no earlier than 2024-05-22 09:00 | 3D аниматор; Web-дизайнер; Ведущий программист; Мультимедиа- корреспондент; Системный аналитик; Технический писатель; Художник-дизайнер | 7h | 61 | 61 |
| 41 | 11.13 | Совещание 13 | manual | 1h | 2024-05-29 09:00 | 2024-05-29 10:00 | 2024-05-29 09:00 | 2024-05-29 10:00 | 1h | start no earlier than 2024-05-29 09:00 | 3D аниматор; Web-дизайнер; Ведущий программист; Мультимедиа- корреспондент; Системный аналитик; Технический писатель; Художник-дизайнер | 7h | 61 | 61 |
| 42 | 11.14 | Совещание 14 | manual | 1h | 2024-06-05 09:00 | 2024-06-05 10:00 | 2024-06-05 09:00 | 2024-06-05 10:00 | 1h | start no earlier than 2024-06-05 09:00 | 3D аниматор; Web-дизайнер; Ведущий программист; Мультимедиа- корреспондент; Системный аналитик; Технический писатель; Художник-дизайнер | 7h | 61 | 61 |
| 43 | 11.15 | Совещание 15 | manual | 1h | 2024-06-12 09:00 | 2024-06-12 10:00 | 2024-06-12 09:00 | 2024-06-12 10:00 | 1h | start no earlier than 2024-06-12 09:00 | 3D аниматор; Web-дизайнер; Ведущий программист; Мультимедиа- корреспондент; Системный аналитик; Технический писатель; Художник-дизайнер | 7h | 61 | 61 |
| 44 | 11.16 | Совещание 16 | manual | 1h | 2024-06-19 09:00 | 2024-06-19 10:00 | 2024-06-19 09:00 | 2024-06-19 10:00 | 1h | start no earlier than 2024-06-19 09:00 | 3D аниматор; Web-дизайнер; Ведущий программист; Мультимедиа- корреспондент; Системный аналитик; Технический писатель; Художник-дизайнер | 7h | 61 | 61 |
| 45 | 11.17 | Совещание 17 | manual | 1h | 2024-06-26 09:00 | 2024-06-26 10:00 | 2024-06-26 09:00 | 2024-06-26 10:00 | 1h | start no earlier than 2024-06-26 09:00 | 3D аниматор; Web-дизайнер; Ведущий программист; Мультимедиа- корреспондент; Системный аналитик; Технический писатель; Художник-дизайнер | 7h | 61 | 61 |
| 46 | 11.18 | Совещание 18 | manual | 1h | 2024-07-03 09:00 | 2024-07-03 10:00 | 2024-07-03 09:00 | 2024-07-03 10:00 | 1h | start no earlier than 2024-07-03 09:00 | 3D аниматор; Web-дизайнер; Ведущий программист; Мультимедиа- корреспондент; Системный аналитик; Технический писатель; Художник-дизайнер | 7h | 61 | 61 |
| 47 | 11.19 | Совещание 19 | manual | 1h | 2024-07-10 09:00 | 2024-07-10 10:00 | 2024-07-10 09:00 | 2024-07-10 10:00 | 1h | start no earlier than 2024-07-10 09:00 | 3D аниматор; Web-дизайнер; Ведущий программист; Мультимедиа- корреспондент; Системный аналитик; Технический писатель; Художник-дизайнер | 7h | 61 | 61 |
| 48 | 11.20 | Совещание 20 | manual | 1h | 2024-07-17 09:00 | 2024-07-17 10:00 | 2024-07-17 09:00 | 2024-07-17 10:00 | 1h | start no earlier than 2024-07-17 09:00 | 3D аниматор; Web-дизайнер; Ведущий программист; Мультимедиа- корреспондент; Системный аналитик; Технический писатель; Художник-дизайнер | 7h | 61 | 61 |
| 49 | 11.21 | Совещание 21 | manual | 1h | 2024-07-24 09:00 | 2024-07-24 10:00 | 2024-07-24 09:00 | 2024-07-24 10:00 | 1h | start no earlier than 2024-07-24 09:00 | 3D аниматор; Web-дизайнер; Ведущий программист; Мультимедиа- корреспондент; Системный аналитик; Технический писатель; Художник-дизайнер | 7h | 61 | 61 |
